Schedule from MS Project, 2026-02-09 to 2026-06-22, status date 2026-04-05, costs in р., A marks actual dates.
Microsoft

## Calendars

- Стандартный: Mon-Fri 09:00-13:00, 14:00-18:00; Sat-Sun off.

## Resources

| Resource | Rate | Cost per use |
| --- | --- | --- |
| Заказчик |  |  |
| Разработчик | 177 |  |
| Тестолог | 177 |  |
| dbdiagram.io |  |  |
| Excalidraw |  |  |
| Word |  |  |
| Obsidian |  |  |
| VS Code |  |  |
| LLM-агенты |  |  |
| Литература |  |  |
| Интернет | 900 |  |
| Науч. рук. | 220 |  |
| PostgreSQL |  |  |
| Rust |  |  |
| C# |  |  |
| Visual Studio |  |  |
| ПК |  | 80000 |
| GitFlic |  |  |

## Schedule

| ID | WBS | Task | Duration | Start | Finish | Predecessors | Complete | Remaining | Total slack | Constraint | Resources | Work | Actual work | Cost | Actual cost |
| --- | --- | --- | --- | --- | --- | --- | --- | --- | --- | --- | --- | --- | --- | --- | --- |
| 1 | 1 | **Диплом** | 96d | 2026-02-09 A | 2026-06-22 |  | 32% | 65.42d | 0d |  | ПК; Obsidian; Word; Интернет; Литература | 3128h | 860.67h | 482,448 | 184,938.64 |
| 2 | 1.1 | Анализ требований (ТЗ) | 5d | 2026-02-09 A | 2026-02-13 A |  | 100% |  |  | start no earlier than 2026-02-09 | Заказчик; Разработчик | 80h | 80h | 7,080 | 7,080 |
| 3 | 1.2 | **Подготовительные работы** | 9d | 2026-02-16 A | 2026-02-26 A |  | 100% |  |  |  |  | 216h | 216h | 40,932 | 40,932 |
| 4 | 1.2.1 | Сравнительный анализ отечественных и зарубежных аналогов проектируемой системы | 9d | 2026-02-16 A | 2026-02-26 A | 2 | 100% |  |  | start no earlier than 2026-02-16 | LLM-агенты; Интернет; Разработчик; Литература | 72h | 72h | 13,644 | 13,644 |
| 5 | 1.2.2 | Выбор технологии, среды и языка программирования | 9d | 2026-02-16 A | 2026-02-26 A | 2 | 100% |  |  | start no earlier than 2026-02-16 | LLM-агенты; Интернет; Разработчик; Литература | 72h | 72h | 13,644 | 13,644 |
| 6 | 1.2.3 | Анализ процесса обработки информации, выбор структур данных для её хранения, выбор методов и алгоритмов решения задачи | 9d | 2026-02-16 A | 2026-02-26 A | 2 | 100% |  |  | start no earlier than 2026-02-16 | LLM-агенты; Интернет; Разработчик; Литература | 72h | 72h | 13,644 | 13,644 |
| 7 | 1.3 | **Разработка спецификаций проектируемой системы** | 26d | 2026-02-27 A | 2026-04-03 A |  | 100% |  |  |  |  | 320h | 320h | 56,640 | 56,640 |
| 8 | 1.3.1 | Построение диаграмм вариантов использования | 5d | 2026-02-27 A | 2026-03-05 A | 6 | 100% |  |  | start no earlier than 2026-02-27 | Разработчик; Excalidraw; LLM-агенты | 40h | 40h | 7,080 | 7,080 |
| 9 | 1.3.2 | Построение контекстных диаграмм классов | 5d | 2026-02-27 A | 2026-03-05 A | 6 | 100% |  |  | start no earlier than 2026-02-27 | Разработчик; Excalidraw; LLM-агенты | 40h | 40h | 7,080 | 7,080 |
| 10 | 1.3.3 | Построение диаграмм последовательностей системы | 5d | 2026-03-09 A | 2026-03-13 A | 6 | 100% |  |  | start no earlier than 2026-03-09 | Разработчик; Excalidraw; LLM-агенты | 40h | 40h | 7,080 | 7,080 |
| 11 | 1.3.4 | Построение диаграммы деятельностей варианта использования | 5d | 2026-03-09 A | 2026-03-13 A | 6 | 100% |  |  | start no earlier than 2026-03-09 | Разработчик; Excalidraw; LLM-агенты | 40h | 40h | 7,080 | 7,080 |
| 12 | 1.3.5 | Построение диаграммы переходов состояний | 10d | 2026-03-23 A | 2026-04-03 A | 6 | 100% |  |  | start no earlier than 2026-03-23 | Разработчик; Excalidraw; LLM-агенты | 80h | 80h | 14,160 | 14,160 |
| 13 | 1.3.6 | Построение диаграммы отношений компонентов данных | 10d | 2026-03-23 A | 2026-04-03 A | 6 | 100% |  |  | start no earlier than 2026-03-23 | Разработчик; Excalidraw; LLM-агенты | 80h | 80h | 14,160 | 14,160 |
| 14 | 1.4 | **Проектирование программного обеспечения** | 50d | 2026-04-06 | 2026-06-12 |  |  |  | 0d |  |  | 560h |  | 99,120 |  |
| 15 | 1.4.1 | Проектирование структуры системы и построение диаграммы пакетов | 10d | 2026-04-06 | 2026-04-17 | 13 |  |  | 0d | start no earlier than 2026-04-06 | Разработчик; LLM-агенты; Excalidraw | 80h |  | 14,160 |  |
| 16 | 1.4.2 | Проектирование функциональных пакетов | 20d | 2026-04-20 | 2026-05-15 | 15 |  |  | 0d | start no earlier than 2026-04-17 | Разработчик; LLM-агенты; Excalidraw | 160h |  | 28,320 |  |
| 17 | 1.4.3 | Построение диаграммы компонентов | 20d | 2026-05-18 | 2026-06-12 | 16 |  |  | 6d | start no earlier than 2026-04-13 | Разработчик; LLM-агенты; Excalidraw | 160h |  | 28,320 |  |
| 18 | 1.4.4 | Построение диаграммы размещения | 5d | 2026-05-05 | 2026-05-11 | 15 |  |  | 30d | start no earlier than 2026-05-05 | Разработчик; LLM-агенты; Excalidraw | 40h |  | 7,080 |  |
| 19 | 1.4.5 | Проектирование базы данных | 15d | 2026-04-06 | 2026-04-24 | 6, 2 |  |  | 41d | start no earlier than 2026-04-06 | dbdiagram.io; Разработчик; PostgreSQL; C#; Visual Studio | 120h |  | 21,240 |  |
| 20 | 1.5 | **Разработка программного обеспечения** | 31d | 2026-05-11 | 2026-06-22 |  |  |  |  |  |  | 920h |  | 162,840 |  |
| 21 | 1.5.1 | Разработка пакетов ... | 26d | 2026-05-18 | 2026-06-22 | 15, 16 |  |  | 0d | start no earlier than 2026-05-11 | Тестолог; VS Code; LLM-агенты; Rust; C#; Visual Studio; GitFlic; Разработчик | 416h |  | 73,632 |  |
| 22 | 1.5.2 | Проектирование интерфейса пользователя | 16d | 2026-06-01 | 2026-06-22 | 6, 8 |  |  | 0d | start no earlier than 2026-06-01 | Excalidraw; Тестолог; VS Code; LLM-агенты; Разработчик | 256h |  | 45,312 |  |
| 23 | 1.5.3 | Выбор стратегии тестирования, разработки тестов, программа и методика испытаний | 31d | 2026-05-11 | 2026-06-22 | 2 |  |  | 0d | start no earlier than 2026-05-11 | Тестолог; VS Code; LLM-агенты; C#; Rust; Visual Studio | 248h |  | 43,896 |  |
| 24 | 1.6 | Технико-экономическое обоснование | 11d | 2026-06-08 | 2026-06-22 | 2, 4, 6 |  |  | 0d | start no earlier than 2026-06-08 | Науч. рук.; Заказчик; Разработчик | 264h |  | 34,936 |  |
